# ProjectPlanV1

How a schedule from MS Project changed from version to version. A marks actual dates.

## Version 1 (saved 2015-04-13, file ProjectPlanV1.mpp)

Note of the change: Added project

| ID | WBS | Task | Duration | Start | Finish | Predecessors | Total float |
| --- | --- | --- | --- | --- | --- | --- | --- |
| 1 | 1 | **Pre-Production** | 22d | 2015-03-30 | 2015-04-28 |  | 0d |
| 2 |  | Review script | 4d | 2015-03-30 | 2015-04-02 |  | 0d |
| 3 |  | Develop script breakdown and schedule | 3d | 2015-04-03 | 2015-04-07 | 2 | 0d |
| 4 | 1.3 | **Develop production boards** | 5d | 2015-04-08 | 2015-04-14 | 3 | 0d |
| 5 |  | Research requirements | 1d | 2015-04-08 | 2015-04-08 | 3 | 0d |
| 6 |  | Development of production board | 3d | 2015-04-09 | 2015-04-13 | 5 | 0d |
| 7 |  | Final review | 1d | 2015-04-14 | 2015-04-14 | 6 | 0d |
| 8 |  | Scout locations | 1w | 2015-04-15 | 2015-04-21 | 7 | 0d |
| 9 |  | Select locations | 2d | 2015-04-22 | 2015-04-23 | 8 | 0d |
| 10 |  | Apply for filming permits | 1d | 2015-04-24 | 2015-04-24 | 9 | 0d |
| 11 |  | Reserve camera equipment | 1d | 2015-04-27 | 2015-04-27 | 10 | 0d |
| 12 |  | Reserve sound equipment | 1d | 2015-04-28 | 2015-04-28 | 11 | 0d |
| 13 |  | Pre-Production complete! | 0d | 2015-04-28 | 2015-04-28 | 12 | 0d |
| 14 | 2 | **Production** | 23d | 2015-04-29 | 2015-05-29 | 13 | 0d |
| 15 |  | Set up Film Set | 3d | 2015-04-29 | 2015-05-01 | 13 | 0d |
| 16 | 2.2 | **Filming** | 20d | 2015-05-04 | 2015-05-29 | 15 | 0d |
| 17 | 2.2.1 | **Shooting** | 8d | 2015-05-04 | 2015-05-13 | 15 | 0d |
| 18 |  | Pratice scenes | 1d | 2015-05-04 | 2015-05-04 | 15 | 0d |
| 19 |  | Extra scenes | 2d | 2015-05-05 | 2015-05-06 | 18 | 0d |
| 20 |  | Main scenes | 1w | 2015-05-07 | 2015-05-13 | 19 | 0d |
| 21 | 2.2.2 | **Editing Video** | 12d | 2015-05-14 | 2015-05-29 | 20 | 0d |
| 22 |  | Review scenes | 1d | 2015-05-14 | 2015-05-14 | 20 | 0d |
| 23 |  | Video & sound effect editing | 2w | 2015-05-15 | 2015-05-28 | 22 | 0d |
| 24 |  | Final review of film | 1d | 2015-05-29 | 2015-05-29 | 23 | 0d |
| 25 |  | Production & Filming complete | 0d | 2015-05-29 | 2015-05-29 | 24 | 0d |
| 26 | 3 | **Web site Design** | 24d | 2015-06-01 | 2015-07-02 | 25 | 0d |
| 27 | 3.1 | **Take Photos** | 4d | 2015-06-01 | 2015-06-04 | 25 | 0d |
| 28 |  | Photo shoot | 1d | 2015-06-01 | 2015-06-01 | 25 | 0d |
| 29 |  | Photoshop | 3d | 2015-06-02 | 2015-06-04 | 28 | 0d |
| 30 | 3.2 | **Programming of website** | 15d | 2015-06-05 | 2015-06-25 | 29 | 0d |
| 31 |  | Tasks broken into user storys | 1d | 2015-06-05 | 2015-06-05 | 29 | 0d |
| 32 |  | Server configuration | 1d | 2015-06-08 | 2015-06-08 | 31 | 0d |
| 33 |  | Develop website | 2w | 2015-06-09 | 2015-06-22 | 32 | 0d |
| 34 |  | Website security | 3d | 2015-06-23 | 2015-06-25 | 33 | 0d |
| 35 |  | useability & design | 1w | 2015-06-25 | 2015-07-02 | 34 | 0d |
| 36 |  | website launch | 0d | 2015-07-02 | 2015-07-02 | 35 | 0d |
| 37 | 4 | **testing** | 5d | 2015-07-03 | 2015-07-09 | 36 | 0d |
| 38 |  | task1 | 2d | 2015-07-03 | 2015-07-06 | 36 | 0d |
| 39 |  | task2 | 2d | 2015-07-07 | 2015-07-08 | 38 | 0d |
| 40 |  | task3 | 1d | 2015-07-09 | 2015-07-09 | 39 | 0d |
| 41 |  | Final project hand-off | 0d | 2015-07-09 | 2015-07-09 | 40 | 0d |
| 42 | 5 | **Presentation** | 1d | 2015-07-16 | 2015-07-16 | 41 | 0d |
| 43 |  | Final presentation | 1d | 2015-07-16 | 2015-07-16 | 41FS+4d | 0d |
| 44 | 6 | **Training** | 6d | 2015-07-17 | 2015-07-24 | 43 | 0d |
| 45 |  | Presentation of Website | 2d | 2015-07-17 | 2015-07-20 | 43 | 0d |
| 46 |  | Training | 3d | 2015-07-21 | 2015-07-23 | 45 | 0d |
| 47 |  | Final handover | 1d | 2015-07-24 | 2015-07-24 | 46 | 0d |

## Version 2 (saved 2015-04-13, file ProjectPlanV2.mpp)

Note of the change: Added project

Last finish 2015-07-24 → 2015-07-14 (-10d).

Changed:

| ID | Task | Start | Finish | Duration | Total float | Predecessors |
| --- | --- | --- | --- | --- | --- | --- |
| 1 | **Pre-Production** |  | 2015-04-28 → 2015-04-27 (-1d) | 22d → 21d |  |  |
| 9 | Select locations |  |  |  |  | 8 → 8FS-3d |
| 12 | Reserve sound equipment | 2015-04-28 → 2015-04-27 (-1d) | 2015-04-28 → 2015-04-27 (-1d) |  |  | 11 → 11FF |
| 13 | Pre-Production complete! | 2015-04-28 → 2015-04-27 (-1d) | 2015-04-28 → 2015-04-27 (-1d) |  |  |  |
| 14 | **Production** | 2015-04-29 → 2015-04-28 (-1d) | 2015-05-29 → 2015-05-19 (-10d) | 23d → 16d |  |  |
| 15 | Set up Film Set | 2015-04-29 → 2015-04-28 (-1d) | 2015-05-01 → 2015-04-30 (-1d) |  |  |  |
| 16 | **Filming** | 2015-05-04 → 2015-04-29 (-5d) | 2015-05-29 → 2015-05-19 (-10d) | 20d → 15d | 0d → none |  |
| 17 | **Shooting** | 2015-05-04 → 2015-05-01 (-3d) | 2015-05-13 → 2015-05-07 (-6d) | 8d → 5d |  |  |
| 18 | Pratice scenes | 2015-05-04 → 2015-05-01 (-3d) | 2015-05-04 → 2015-05-01 (-3d) |  |  |  |
| 19 | Extra scenes | 2015-05-05 → 2015-05-04 (-1d) | 2015-05-06 → 2015-05-04 (-2d) | 2d → 1d |  |  |
| 20 | Main scenes | 2015-05-07 → 2015-05-05 (-2d) | 2015-05-13 → 2015-05-07 (-6d) | 1w → 3d |  |  |
| 21 | **Editing Video** | 2015-05-14 → 2015-05-08 (-6d) | 2015-05-29 → 2015-05-19 (-10d) | 12d → 8d |  |  |
| 22 | Review scenes | 2015-05-14 → 2015-05-08 (-6d) | 2015-05-14 → 2015-05-08 (-6d) |  |  |  |
| 23 | Video & sound effect editing | 2015-05-15 → 2015-05-11 (-4d) | 2015-05-28 → 2015-05-18 (-10d) | 2w → 6d |  |  |
| 24 | Final review of film | 2015-05-29 → 2015-05-19 (-10d) | 2015-05-29 → 2015-05-19 (-10d) |  |  |  |
| 25 | Production & Filming complete | 2015-05-29 → 2015-05-19 (-10d) | 2015-05-29 → 2015-05-19 (-10d) |  |  |  |
| 26 | **Web site Design** | 2015-06-01 → 2015-05-20 (-12d) | 2015-07-02 → 2015-06-22 (-10d) |  |  |  |
| 27 | **Take Photos** | 2015-06-01 → 2015-05-20 (-12d) | 2015-06-04 → 2015-05-25 (-10d) |  |  | 25 → 25, 14SS |
| 28 | Photo shoot | 2015-06-01 → 2015-05-20 (-12d) | 2015-06-01 → 2015-05-20 (-12d) |  |  |  |
| 29 | Photoshop | 2015-06-02 → 2015-05-21 (-12d) | 2015-06-04 → 2015-05-25 (-10d) |  |  |  |
| 30 | **Programming of website** | 2015-06-05 → 2015-05-26 (-10d) | 2015-06-25 → 2015-06-15 (-10d) |  |  |  |
| 31 | Tasks broken into user storys | 2015-06-05 → 2015-05-26 (-10d) | 2015-06-05 → 2015-05-26 (-10d) |  |  |  |
| 32 | Server configuration | 2015-06-08 → 2015-05-27 (-12d) | 2015-06-08 → 2015-05-27 (-12d) |  |  |  |
| 33 | Develop website | 2015-06-09 → 2015-05-28 (-12d) | 2015-06-22 → 2015-06-10 (-12d) |  |  |  |
| 34 | Website security | 2015-06-23 → 2015-06-11 (-12d) | 2015-06-25 → 2015-06-15 (-10d) |  |  |  |
| 35 | useability & design | 2015-06-25 → 2015-06-15 (-10d) | 2015-07-02 → 2015-06-22 (-10d) |  |  |  |
| 36 | website launch | 2015-07-02 → 2015-06-22 (-10d) | 2015-07-02 → 2015-06-22 (-10d) |  |  |  |
| 37 | **testing** | 2015-07-03 → 2015-06-23 (-10d) | 2015-07-09 → 2015-06-29 (-10d) |  |  |  |
| 38 | task1 | 2015-07-03 → 2015-06-23 (-10d) | 2015-07-06 → 2015-06-24 (-12d) |  |  |  |
| 39 | task2 | 2015-07-07 → 2015-06-25 (-12d) | 2015-07-08 → 2015-06-26 (-12d) |  |  |  |
| 40 | task3 | 2015-07-09 → 2015-06-29 (-10d) | 2015-07-09 → 2015-06-29 (-10d) |  |  |  |
| 41 | Final project hand-off | 2015-07-09 → 2015-06-29 (-10d) | 2015-07-09 → 2015-06-29 (-10d) |  |  |  |
| 42 | **Presentation** | 2015-07-16 → 2015-07-06 (-10d) | 2015-07-16 → 2015-07-06 (-10d) |  |  |  |
| 43 | Final presentation | 2015-07-16 → 2015-07-06 (-10d) | 2015-07-16 → 2015-07-06 (-10d) |  |  |  |
| 44 | **Training** | 2015-07-17 → 2015-07-07 (-10d) | 2015-07-24 → 2015-07-14 (-10d) |  |  |  |
| 45 | Presentation of Website | 2015-07-17 → 2015-07-07 (-10d) | 2015-07-20 → 2015-07-08 (-12d) |  |  |  |
| 46 | Training | 2015-07-21 → 2015-07-09 (-12d) | 2015-07-23 → 2015-07-13 (-10d) |  |  |  |
| 47 | Final handover | 2015-07-24 → 2015-07-14 (-10d) | 2015-07-24 → 2015-07-14 (-10d) |  |  |  |

## Version 3 (saved 2015-04-13, file Galway Gadgets Ltd.mpp)

Note of the change: Added project

Last finish 2015-07-14 → 2015-07-28 (+14d). Complete tasks 0 → 6.

Changed:

| ID | Task | Start | Finish | Duration | Complete | Total float | Predecessors | Other |
| --- | --- | --- | --- | --- | --- | --- | --- | --- |
| 1 | **Pre-Production** | 2015-03-30 A | 2015-04-27 → 2015-04-29 (+2d) | 21d → 23d | 0% → 25% | 0d → 64d |  |  |
| 3 | Develop script breakdown and schedule | 2015-04-03 A | 2015-04-07 A |  | 0% → 100% | 0d → none |  |  |
| 10 | Apply for filming permits | 2015-04-24 A | 2015-04-24 → 2015-04-28 A (+4d) | 1d → 3d | 0% → 100% | 0d → none |  |  |
| 11 | Reserve camera equipment | 2015-04-27 → 2015-04-29 (+2d) | 2015-04-27 → 2015-04-29 (+2d) |  |  |  |  |  |
| 12 | Reserve sound equipment | 2015-04-27 → 2015-04-29 (+2d) | 2015-04-27 → 2015-04-29 (+2d) |  |  |  |  |  |
| 13 | Pre-Production complete! | 2015-04-27 → 2015-04-29 (+2d) | 2015-04-27 → 2015-04-29 (+2d) |  |  |  |  |  |
| 14 | **Production** | 2015-04-28 → 2015-04-30 (+2d) | 2015-05-19 → 2015-05-21 (+2d) |  |  |  |  |  |
| 15 | Set up Film Set | 2015-04-28 → 2015-04-30 (+2d) | 2015-04-30 → 2015-05-01 (+1d) | 3d → 2d |  |  |  | resources Production Staff 1; Production Staff 2; Sound Engineer; Video Equipment → Production Staff 1; Production Staff 2; Sound Engineer; Video Equipment; Camera Operator 2; Camera Operator1 |
| 16 | **Filming** | 2015-04-29 → 2015-05-04 (+5d) | 2015-05-19 → 2015-05-21 (+2d) | 15d → 14d |  | none → 0d |  |  |
| 17 | **Shooting** | 2015-05-01 → 2015-05-04 (+3d) | 2015-05-07 → 2015-05-12 (+5d) | 5d → 7d |  |  |  |  |
| 18 | Pratice scenes | 2015-05-01 → 2015-05-04 (+3d) | 2015-05-01 → 2015-05-04 (+3d) |  |  |  |  |  |
| 19 | Extra scenes | 2015-05-04 → 2015-05-05 (+1d) | 2015-05-04 → 2015-05-06 (+2d) | 1d → 2d |  |  |  |  |
| 20 | Main scenes | 2015-05-05 → 2015-05-07 (+2d) | 2015-05-07 → 2015-05-12 (+5d) | 3d → 4d |  |  |  |  |
| 21 | **Editing Video** | 2015-05-08 → 2015-05-13 (+5d) | 2015-05-19 → 2015-05-21 (+2d) | 8d → 7d |  |  |  |  |
| 22 | Review scenes | 2015-05-08 → 2015-05-13 (+5d) | 2015-05-08 → 2015-05-13 (+5d) |  |  |  |  |  |
| 23 | Video & sound effect editing | 2015-05-11 → 2015-05-14 (+3d) | 2015-05-18 → 2015-05-20 (+2d) | 6d → 5d |  |  |  | resources Film editor; Sound Engineer → Film editor; Sound Engineer; Editor |
| 24 | Final review of film | 2015-05-19 → 2015-05-21 (+2d) | 2015-05-19 → 2015-05-21 (+2d) |  |  |  |  |  |
| 25 | Production & Filming complete | 2015-05-19 → 2015-05-21 (+2d) | 2015-05-19 → 2015-05-21 (+2d) |  |  |  |  |  |
| 26 | **Web site Design** | 2015-05-20 → 2015-05-22 A (+2d) | 2015-06-22 → 2015-07-06 (+14d) | 24d → 32d | 0% → 68% |  |  |  |
| 27 | **Take Photos** | 2015-05-20 → 2015-05-22 (+2d) | 2015-05-25 → 2015-05-27 (+2d) |  |  |  |  |  |
| 28 | Photo shoot | 2015-05-20 → 2015-05-22 (+2d) | 2015-05-20 → 2015-05-22 (+2d) |  |  |  |  |  |
| 29 | Photoshop | 2015-05-21 → 2015-05-25 (+4d) | 2015-05-25 → 2015-05-27 (+2d) |  |  |  |  |  |
| 30 | **Programming of website** | 2015-05-26 → 2015-06-03 A (+8d) | 2015-06-15 → 2015-06-29 A (+14d) | 15d → 19d | 0% → 100% | 0d → none | 29 → 29FS+4d |  |
| 31 | Tasks broken into user storys and assigned | 2015-05-26 → 2015-06-03 A (+8d) | 2015-05-26 → 2015-06-04 A (+9d) | 1d → 2d | 0% → 100% | 0d → none |  | was named Tasks broken into user storys |
| 32 | Server configuration | 2015-05-27 → 2015-06-05 A (+9d) | 2015-05-27 → 2015-06-08 A (+12d) | 1d → 2d | 0% → 100% | 0d → none |  |  |
| 33 | Develop website | 2015-05-28 → 2015-06-09 A (+12d) | 2015-06-10 → 2015-06-22 A (+12d) |  | 0% → 100% | 0d → none |  |  |
| 34 | Website security | 2015-06-11 → 2015-06-23 A (+12d) | 2015-06-15 → 2015-06-29 A (+14d) | 3d → 5d | 0% → 100% | 0d → none |  |  |
| 35 | useability & design | 2015-06-15 → 2015-06-29 (+14d) | 2015-06-22 → 2015-07-06 (+14d) |  |  |  |  |  |
| 36 | website launch | 2015-06-22 → 2015-07-06 (+14d) | 2015-06-22 → 2015-07-06 (+14d) |  |  |  |  |  |
| 37 | **testing** | 2015-06-23 → 2015-07-07 (+14d) | 2015-06-29 → 2015-07-13 (+14d) |  |  |  |  |  |
| 38 | task1 | 2015-06-23 → 2015-07-07 (+14d) | 2015-06-24 → 2015-07-08 (+14d) |  |  |  |  |  |
| 39 | task2 | 2015-06-25 → 2015-07-09 (+14d) | 2015-06-26 → 2015-07-10 (+14d) |  |  |  |  |  |
| 40 | task3 | 2015-06-29 → 2015-07-13 (+14d) | 2015-06-29 → 2015-07-13 (+14d) |  |  |  |  |  |
| 41 | Final project hand-off | 2015-06-29 → 2015-07-13 (+14d) | 2015-06-29 → 2015-07-13 (+14d) |  |  |  |  |  |
| 42 | **Presentation** | 2015-07-06 → 2015-07-20 (+14d) | 2015-07-06 → 2015-07-20 (+14d) |  |  |  |  |  |
| 43 | Final presentation | 2015-07-06 → 2015-07-20 (+14d) | 2015-07-06 → 2015-07-20 (+14d) |  |  |  |  |  |
| 44 | **Training** | 2015-07-07 → 2015-07-21 (+14d) | 2015-07-14 → 2015-07-28 (+14d) |  |  |  |  |  |
| 45 | Presentation of Website | 2015-07-07 → 2015-07-21 (+14d) | 2015-07-08 → 2015-07-22 (+14d) |  |  |  |  |  |
| 46 | Training | 2015-07-09 → 2015-07-23 (+14d) | 2015-07-13 → 2015-07-27 (+14d) |  |  |  |  |  |
| 47 | Final handover | 2015-07-14 → 2015-07-28 (+14d) | 2015-07-14 → 2015-07-28 (+14d) |  |  |  |  |  |

## Version 4 (saved 2015-04-13, file ProjectPlanV3.mpp)

Note of the change: Added project

Last finish 2015-07-28 → 2015-08-04 (+7d). Complete tasks 6 → 15.

Changed:

| ID | Task | Start | Finish | Duration | Complete | Total float | Predecessors |
| --- | --- | --- | --- | --- | --- | --- | --- |
| 1 | **Pre-Production** |  | 2015-04-29 A |  | 25% → 100% | 64d → none |  |
| 2 | Review script | 2015-03-30 A | 2015-04-02 A |  | 0% → 100% | 83d → none |  |
| 4 | **Develop production boards** | 2015-04-08 A | 2015-04-14 A |  | 0% → 100% | 68d → none |  |
| 5 | Research requirements | 2015-04-08 A | 2015-04-08 A |  | 0% → 100% | 68d → none |  |
| 6 | Development of production board | 2015-04-09 A | 2015-04-13 A |  | 0% → 100% | 68d → none |  |
| 7 | Final review | 2015-04-14 A | 2015-04-14 A |  | 0% → 100% | 68d → none |  |
| 8 | Scout locations | 2015-04-15 A | 2015-04-21 A |  | 0% → 100% | 68d → none |  |
| 9 | Select locations | 2015-04-22 A | 2015-04-23 A |  | 0% → 100% | 68d → none |  |
| 11 | Reserve camera equipment | 2015-04-29 A | 2015-04-29 A |  | 0% → 100% | 0d → none |  |
| 12 | Reserve sound equipment | 2015-04-29 A | 2015-04-29 A |  | 0% → 100% | 0d → none |  |
| 13 | Pre-Production complete! | 2015-04-29 A | 2015-04-29 A |  | 0% → 100% | 0d → none |  |
| 14 | **Production** |  | 2015-05-21 → 2015-05-20 (-1d) | 16d → 15d |  | 0d → 41.79d |  |
| 15 | Set up Film Set |  | 2015-05-01 → 2015-04-30 (-1d) | 2d → 1d |  | 0d → 41.79d |  |
| 16 | **Filming** | 2015-05-04 → 2015-05-01 (-3d) | 2015-05-21 → 2015-05-20 (-1d) |  |  | 0d → 41.79d |  |
| 17 | **Shooting** | 2015-05-04 → 2015-05-01 (-3d) | 2015-05-12 → 2015-05-11 (-1d) |  |  | 0d → 41.79d |  |
| 18 | Pratice scenes | 2015-05-04 → 2015-05-01 (-3d) | 2015-05-04 → 2015-05-01 (-3d) |  |  | 0d → 41.79d |  |
| 19 | Extra scenes | 2015-05-05 → 2015-05-04 (-1d) | 2015-05-06 → 2015-05-05 (-1d) |  |  | 0d → 41.79d |  |
| 20 | Main scenes | 2015-05-07 → 2015-05-06 (-1d) | 2015-05-12 → 2015-05-11 (-1d) |  |  | 0d → 41.79d |  |
| 21 | **Editing Video** | 2015-05-13 → 2015-05-12 (-1d) | 2015-05-21 → 2015-05-20 (-1d) |  |  | 0d → 41.79d |  |
| 22 | Review scenes | 2015-05-13 → 2015-05-12 (-1d) | 2015-05-13 → 2015-05-12 (-1d) |  |  | 0d → 41.79d |  |
| 23 | Video & sound effect editing | 2015-05-14 → 2015-05-13 (-1d) | 2015-05-20 → 2015-05-19 (-1d) |  |  | 0d → 41.79d |  |
| 24 | Final review of film | 2015-05-21 → 2015-05-20 (-1d) | 2015-05-21 → 2015-05-20 (-1d) |  |  | 0d → 41.79d |  |
| 25 | Production & Filming complete | 2015-05-21 → 2015-05-20 (-1d) | 2015-05-21 → 2015-05-20 (-1d) |  |  | 0d → 41.79d |  |
| 26 | **Web site Design** | 2015-05-22 A → 2015-05-21 A (-1d) | 2015-07-06 → 2015-07-13 (+7d) | 32d → 38d | 68% → 70% | 0d → 16d |  |
| 27 | **Take Photos** | 2015-05-22 → 2015-05-21 (-1d) | 2015-05-27 → 2015-05-25 (-2d) | 4d → 3d |  | 0d → 51d |  |
| 28 | Photo shoot | 2015-05-22 → 2015-05-21 (-1d) | 2015-05-22 → 2015-05-21 (-1d) |  |  | 0d → 51d |  |
| 29 | Photoshop | 2015-05-25 → 2015-05-22 (-3d) | 2015-05-27 → 2015-05-25 (-2d) | 3d → 2d |  | 0d → 51d |  |
| 36 | website launch | 2015-07-06 → 2015-07-13 (+7d) | 2015-07-06 → 2015-07-13 (+7d) |  |  |  | 35 → 35FS+5d |
| 37 | **testing** | 2015-07-07 → 2015-07-14 (+7d) | 2015-07-13 → 2015-07-20 (+7d) |  |  |  |  |
| 38 | task1 | 2015-07-07 → 2015-07-14 (+7d) | 2015-07-08 → 2015-07-15 (+7d) |  |  |  |  |
| 39 | task2 | 2015-07-09 → 2015-07-16 (+7d) | 2015-07-10 → 2015-07-17 (+7d) |  |  |  |  |
| 40 | task3 | 2015-07-13 → 2015-07-20 (+7d) | 2015-07-13 → 2015-07-20 (+7d) |  |  |  |  |
| 41 | Final project hand-off | 2015-07-13 → 2015-07-20 (+7d) | 2015-07-13 → 2015-07-20 (+7d) |  |  |  |  |
| 42 | **Presentation** | 2015-07-20 → 2015-07-27 (+7d) | 2015-07-20 → 2015-07-27 (+7d) |  |  |  |  |
| 43 | Final presentation | 2015-07-20 → 2015-07-27 (+7d) | 2015-07-20 → 2015-07-27 (+7d) |  |  |  |  |
| 44 | **Training** | 2015-07-21 → 2015-07-28 (+7d) | 2015-07-28 → 2015-08-04 (+7d) |  |  |  |  |
| 45 | Presentation of Website | 2015-07-21 → 2015-07-28 (+7d) | 2015-07-22 → 2015-07-29 (+7d) |  |  |  |  |
| 46 | Training | 2015-07-23 → 2015-07-30 (+7d) | 2015-07-27 → 2015-08-03 (+7d) |  |  |  |  |
| 47 | Final handover | 2015-07-28 → 2015-08-04 (+7d) | 2015-07-28 → 2015-08-04 (+7d) |  |  |  |  |
